Activity ID,Activity Name,WBS Category,Predecessors,Duration (days),Relationship
A1,Conduct Site Surveys,1.1.1 Site Assessment,-,10,-
A2,Analyze Soil Conditions,1.1.1 Site Assessment,A1,7,FS
A3,Evaluate Environmental Factors,1.1.1 Site Assessment,A1,7,FS
B1,Develop Conceptual Master Plan,1.1.2 Master Plan Development,"A2, A3",14,FS
B2,Incorporate Sustainability Principles,1.1.2 Master Plan Development,B1,10,FS
B3,Design Transportation System,1.1.2 Master Plan Development,B1,14,FS
C1,Estimate Energy Demand,1.1.3 Energy/Water Demand Estimation,B2,7,FS
C2,Estimate Water Demand,1.1.3 Energy/Water Demand Estimation,B2,7,FS
C3,Evaluate Renewable Energy Options,1.1.3 Energy/Water Demand Estimation,B2,7,FS
D1,Conduct Technical Feasibility Analysis,1.1.4 Feasibility Study,"C1, C2, C3",10,FS
D2,Conduct Economic Feasibility Analysis,1.1.4 Feasibility Study,"C1, C2, C3",10,FS
D3,Conduct Environmental Impact Assessment,1.1.4 Feasibility Study,"C1, C2, C3",10,FS
E1,Clear and Grub Site,1.2.1 Earthworks and Foundations,"D1, D2, D3",7,FS
E2,Grade Site,1.2.1 Earthworks and Foundations,E1,10,FS
E3,Excavate Foundation,1.2.1 Earthworks and Foundations,E2,14,FS
F1,Procure Building Materials,1.2.2 Building Construction,"D1, D2, D3",21,FS
F2,Construct Building Foundations,1.2.2 Building Construction,"E3, F1",28,FS
F3,Erect Building Structure,1.2.2 Building Construction,F2,42,FS
F4,Install MEP Systems,1.2.2 Building Construction,F3,35,FS
F5,Finish Building Interiors,1.2.2 Building Construction,F4,28,FS
G1,Excavate River and Lake Beds,1.2.3 River and Lake Installation,E3,21,FS
G2,Install River and Lake Liners,1.2.3 River and Lake Installation,G1,14,FS
G3,Fill River and Lake Beds,1.2.3 River and Lake Installation,G2,14,FS
G4,Landscape River and Lake Areas,1.2.3 River and Lake Installation,G3,21,FS
I1,Construct Roads,1.2.4 Transportation Facility Construction,E3,28,FS
I2,Construct Walkways and Bike Paths,1.2.4 Transportation Facility Construction,E3,21,FS
I3,Install Public Transit Infrastructure,1.2.4 Transportation Facility Construction,E3,35,FS
J1,Assess Solar Panel Site Suitability,1.3.1 Solar Panel Site Selection,B3,7,FS
J2,Select Optimal Solar Panel Locations,1.3.1 Solar Panel Site Selection,J1,7,FS
K1,Procure Solar Panels,1.3.2 Solar Panel Installation,J2,14,FS
K2,Install Solar Panels,1.3.2 Solar Panel Installation,K1,21,FS
K3,Connect Solar Panels to Inverters,1.3.2 Solar Panel Installation,K2,7,FS
L1,Procure Inverters,1.3.3 Inverter and Wiring Setup,K3,10,FS
L2,Install Inverters,1.3.3 Inverter and Wiring Setup,L1,7,FS
L3,Install Electrical Wiring,1.3.3 Inverter and Wiring Setup,L2,14,FS
M1,Procure Battery Storage Systems,1.3.4 Battery Storage Integration,L3,10,FS
M2,Install Battery Storage Systems,1.3.4 Battery Storage Integration,M1,7,FS
M3,Integrate Battery Storage with Inverters,1.3.4 Battery Storage Integration,M2,7,FS
N1,Obtain Grid Connection Permits,1.3.5 Grid Connection,M3,14,FS
N2,Install Grid Connection Equipment,1.3.5 Grid Connection,N1,14,FS
N3,Test Grid Connection,1.3.5 Grid Connection,N2,7,FS
V1,Test Solar Panel System,1.3.6 Initial Testing (Energy),N3,3,FS
V2,Test Inverter and Battery System,1.3.6 Initial Testing (Energy),N3,3,FS
V3,Test Grid Integration,1.3.6 Initial Testing (Energy),N3,3,FS
O1,Design Water Treatment Plant,1.4.1 Water Treatment Plant Design,"D1, D2, D3",21,FS
P1,Develop Water Intake System,1.4.2 Water Intake System,O1,14,FS
Q1,Install Pre-Treatment Systems,1.4.3 Pre-Treatment Installation,P1,14,FS
R1,Install Reverse Osmosis System,1.4.4 Reverse Osmosis System,Q1,21,FS
S1,Install Post-Treatment Systems,1.4.5 Post-Treatment and Storage,R1,14,FS
T1,Construct Water Distribution Network,1.4.6 Distribution Network,"S1, G4",21,FS
W1,Test Water Treatment Process,1.4.7 Initial Testing (Water),T1,3,FS
H1,Install Vertical Garden Structures,1.5.1 Vertical Garden Setup,F5,14,FS
H2,Plant Vertical Gardens,1.5.1 Vertical Garden Setup,H1,14,FS
Y1,Conduct Ecosystem Health Assessment,1.5.2 Ecosystem Validation,"T1, H2",14,FS
Y2,Implement Ecosystem Enhancements,1.5.2 Ecosystem Validation,Y1,14,FS
Z1,Landscape Public Spaces,1.5.3 Landscaping and Aesthetics,"G4, Y2",21,FS
U1,Integrate Energy and Water Systems,1.6.1 System Integration,"V3, W1",14,FS
U2,Integrate Transportation System,1.6.1 System Integration,I3,14,FS
X1,Test Road Network,1.6.2 Transportation Testing,"I1, U2",7,FS
X2,Test Walkways and Bike Paths,1.6.2 Transportation Testing,"I2, U2",7,FS
X3,Test Public Transit System,1.6.2 Transportation Testing,"I3, U2",7,FS
AA1,Implement Safety Measures,1.7.1 Safety and Accessibility,"F5, I3, Z1",7,FS
AB1,Conduct Final Building Inspections,1.7.2 Final Inspections,"U1, V3, W1, X1, X2, X3, AA1",7,FS
AC1,Commission Eco-City Systems,1.7.3 Commissioning,AB1,7,FS
AD1,Develop Maintenance Plan,1.7.4 Maintenance Plan,AC1,14,FS
